# 运维管理2 工作计划（2018.03.07 新版数据库 V1.0）

How a schedule from MS Project changed from version to version. A marks actual dates.

## Version 1 (saved 2019-04-04)

Note of the change: first commit with guoyong

| ID | WBS | Task | Duration | Start | Finish | Predecessors | Total float | Constraint |
| --- | --- | --- | --- | --- | --- | --- | --- | --- |
| 1 | 1 | **运维管理主站&&终端 第2阶段** | 30d? | 2019-04-08 | 2019-05-22 |  | 0d | start no earlier than 2019-04-08 |
| 2 | 1.1 | **巡检、检验、验收测试及修复** | 8d? | 2019-04-08 | 2019-04-17 |  | 6d |  |
| 3 |  | 设计部测试并集中反馈测试结果 | 3d | 2019-04-08 | 2019-04-10 |  | 11d |  |
| 4 |  | 完善、修复不符合测试大纲要求 | 2d | 2019-04-11 | 2019-04-12 | 3 | 11d |  |
| 5 |  | 设计部确认效果并意见达成一致 | 3d? | 2019-04-15 | 2019-04-17 | 4 | 11d |  |
| 6 |  | 第一轮中试部测试 | 5d | 2019-04-08 | 2019-04-12 |  | 25d |  |
| 7 |  | bug修复 | 2d | 2019-04-08 | 2019-04-09 |  | 28d |  |
| 8 | 1.2 | **设备台账、图档管理、缺陷管理、典型案例模块测试及修复** | 6d? | 2019-04-08 | 2019-04-15 |  | 24d |  |
| 9 |  | 设计部测试并集中反馈测试结果 | 1d | 2019-04-08 | 2019-04-08 |  | 24d |  |
| 10 |  | 完善、修复不符合测试大纲要求 | 2d | 2019-04-09 | 2019-04-10 | 9 | 24d |  |
| 11 |  | 设计部确认效果并意见达成一致 | 3d? | 2019-04-11 | 2019-04-15 | 10 | 24d |  |
| 12 |  | 中试部测试 | 5d | 2019-04-08 | 2019-04-12 |  | 25d |  |
| 13 |  | bug修复 | 4d | 2019-04-08 | 2019-04-11 |  | 26d |  |
| 14 | 1.3 | **统计分析模块** | 16d? | 2019-04-18 | 2019-05-14 | 5 | 6d |  |
| 15 |  | 设计部测试并集中反馈测试结果 | 1d | 2019-04-18 | 2019-04-18 |  | 16d |  |
| 16 |  | 完善、修复不符合测试大纲要求 | 2d | 2019-04-19 | 2019-04-22 | 15 | 16d |  |
| 17 |  | 设计部确认效果并意见达成一致 | 3d? | 2019-04-23 | 2019-04-25 | 16 | 16d |  |
| 18 |  | 中试部测试 | 5d | 2019-04-18 | 2019-04-24 |  | 17d |  |
| 19 |  | bug修复 | 4d | 2019-04-18 | 2019-04-23 |  | 18d |  |
| 20 | 1.3.6 | **厂站管理-后台** | 3d | 2019-04-18 | 2019-04-22 |  | 11d |  |
| 21 |  | 增长趋势 | 3d | 2019-04-18 | 2019-04-22 |  | 11d |  |
| 22 | 1.3.7 | **变电站(地图点击进去)-后台** | 2d? | 2019-04-23 | 2019-04-24 | 20 | 6d |  |
| 23 |  | 厂站概况 | 1d? | 2019-04-23 | 2019-04-23 |  | 12d |  |
| 24 |  | 设备概况 | 2d | 2019-04-23 | 2019-04-24 |  | 11d |  |
| 25 | 1.3.7.3 | **工作作业** | 1d? | 2019-04-23 | 2019-04-23 |  | 12d |  |
| 26 |  | 运维检修 | 1d? | 2019-04-23 | 2019-04-23 |  | 15d |  |
| 27 |  | 缺陷作业 | 1d? | 2019-04-23 | 2019-04-23 |  | 15d |  |
| 28 |  | 缺陷统计 | 1d? | 2019-04-23 | 2019-04-23 |  | 15d |  |
| 29 |  | 专项作业 | 1d? | 2019-04-23 | 2019-04-23 |  | 15d |  |
| 30 | 1.3.8 | **任务管控-后台** | 4d? | 2019-04-25 | 2019-04-30 | 22 | 11d |  |
| 31 |  | 运维检修 | 1d? | 2019-04-25 | 2019-04-25 |  | 11d |  |
| 32 |  | 缺陷作业 | 1d? | 2019-04-26 | 2019-04-26 | 31 | 11d |  |
| 33 |  | 缺陷统计 | 1d? | 2019-04-29 | 2019-04-29 | 32 | 11d |  |
| 34 |  | 专项作业 | 1d? | 2019-04-30 | 2019-04-30 | 33 | 11d |  |
| 35 | 1.3.9 | **设备管理-后台** | 7d? | 2019-05-06 | 2019-05-14 | 30 | 6d |  |
| 36 | 1.3.9.1 | **设备总览** | 6d? | 2019-05-06 | 2019-05-13 |  | 7d |  |
| 37 |  | 设备规模 | 1d | 2019-05-06 | 2019-05-06 |  | 12d |  |
| 38 |  | 年限分析 | 1d? | 2019-05-07 | 2019-05-07 | 37 | 7d |  |
| 39 |  | 增长趋势 | 2d | 2019-05-08 | 2019-05-09 | 38 | 7d |  |
| 40 |  | 区域分析 | 2d | 2019-05-10 | 2019-05-13 | 39 | 7d |  |
| 41 | 1.3.9.2 | **缺陷总览** | 4d? | 2019-05-06 | 2019-05-09 |  | 9d |  |
| 42 |  | 缺陷统计 | 1d? | 2019-05-06 | 2019-05-06 |  | 12d |  |
| 43 |  | 增长趋势 | 1d? | 2019-05-07 | 2019-05-07 | 42 | 9d |  |
| 44 |  | 专业分析 | 1d? | 2019-05-08 | 2019-05-08 | 43 | 9d |  |
| 45 |  | 设备类型分析 | 1d? | 2019-05-09 | 2019-05-09 | 44 | 9d |  |
| 46 | 1.3.9.3 | **设备周期管理** | 7d? | 2019-05-06 | 2019-05-14 |  | 6d |  |
| 47 |  | 各地市周期分析 | 1d? | 2019-05-06 | 2019-05-06 |  | 12d |  |
| 48 |  | 已超周期分析 | 2d | 2019-05-07 | 2019-05-08 | 47 | 6d |  |
| 49 |  | 3个月内即将找周期分析 | 2d | 2019-05-09 | 2019-05-10 | 48 | 6d |  |
| 50 |  | 已超周期未安排计划分析 | 2d | 2019-05-13 | 2019-05-14 | 49 | 6d |  |
| 51 | 1.4 | **主动推送** | 6d? | 2019-04-08 | 2019-04-15 |  | 24d |  |
| 52 |  | 设计部测试并集中反馈测试结果 | 1d | 2019-04-08 | 2019-04-08 |  | 24d |  |
| 53 |  | 完善、修复不符合测试大纲要求 | 2d | 2019-04-09 | 2019-04-10 | 52 | 24d |  |
| 54 |  | 设计部确认效果并意见达成一致 | 3d? | 2019-04-11 | 2019-04-15 | 53 | 24d |  |
| 55 |  | 中试部测试 | 5d | 2019-04-08 | 2019-04-12 |  | 25d |  |
| 56 |  | bug修复 | 4d | 2019-04-08 | 2019-04-11 |  | 26d |  |
| 57 | 1.5 | **后台管理--模板** | 6d? | 2019-04-08 | 2019-04-15 |  | 24d |  |
| 58 |  | 设计部测试并集中反馈测试结果 | 1d | 2019-04-08 | 2019-04-08 |  | 24d |  |
| 59 |  | 完善、修复不符合测试大纲要求 | 2d | 2019-04-09 | 2019-04-10 | 58 | 24d |  |
| 60 |  | 设计部确认效果并意见达成一致 | 3d? | 2019-04-11 | 2019-04-15 | 59 | 24d |  |
| 61 |  | 中试部测试 | 5d | 2019-04-08 | 2019-04-12 |  | 25d |  |
| 62 |  | bug修复 | 4d | 2019-04-08 | 2019-04-11 |  | 26d |  |
| 63 | 1.6 | **设备信息** | 1d? | 2019-04-08 | 2019-04-08 |  | 29d |  |
| 64 |  | 讨论设计 | 1d? | 2019-04-08 | 2019-04-08 |  | 29d |  |
| 65 | 1.7 | **图像识别** | 30d? | 2019-04-08 | 2019-05-22 |  | 0d |  |
| 66 |  | 5800集成图像识别 | 15d? | 2019-04-08 | 2019-04-26 |  | 15d |  |
| 67 |  | 图像识别--导入模板库 | 30d | 2019-04-08 | 2019-05-22 |  | 0d |  |
| 68 |  | 图像识别项目 | 5d | 2019-04-08 | 2019-04-12 |  | 25d |  |

## Version 2 (saved 2019-04-04)

Note of the change: lgj

Last finish stays 2019-05-22.

Added:

| ID | Task | Duration | Start | Finish | Predecessors |
| --- | --- | --- | --- | --- | --- |
| 63 | **系统管理** | 6d | 2019-04-08 | 2019-04-15 |  |
| 64 | 角色权限管理 | 3d | 2019-04-08 | 2019-04-10 |  |
| 65 | 人员管理 | 3d | 2019-04-11 | 2019-04-15 | 64 |

Changed:

| ID | Task | Start | Finish | Duration | Total float | Other |
| --- | --- | --- | --- | --- | --- | --- |
| 14 | **统计分析模块** |  | 2019-05-14 → 2019-05-21 (+7d) | 16d? → 21d? | 6d → 1d |  |
| 22 | **变电站(地图点击进去)-后台** |  | 2019-04-24 → 2019-04-29 (+5d) | 2d? → 5d? | 6d → 1d |  |
| 25 | **工作作业** |  | 2019-04-23 → 2019-04-29 (+6d) | 1d? → 5d? | 12d → 1d |  |
| 26 | 运维检修 |  |  | 1d? → 1d | 15d → 7d | constraint none → finish no earlier than 2019-04-23 |
| 27 | 缺陷作业 | 2019-04-23 → 2019-04-24 (+1d) | 2019-04-23 → 2019-04-24 (+1d) | 1d? → 1d | 15d → 4d | constraint none → start no earlier than 2019-04-24 |
| 28 | 缺陷统计 | 2019-04-23 → 2019-04-25 (+2d) | 2019-04-23 → 2019-04-25 (+2d) |  | 15d → 3d | constraint none → start no earlier than 2019-04-25 |
| 29 | 专项作业 | 2019-04-23 → 2019-04-26 (+3d) | 2019-04-23 → 2019-04-29 (+6d) | 1d? → 2d | 15d → 1d | constraint none → start no earlier than 2019-04-26 |
| 30 | **任务管控-后台** | 2019-04-25 → 2019-04-30 (+5d) | 2019-04-30 → 2019-05-10 (+10d) | 4d? → 6d? | 11d → 1d |  |
| 31 | 运维检修 | 2019-04-25 → 2019-04-30 (+5d) | 2019-04-25 → 2019-04-30 (+5d) |  | 11d → 3d |  |
| 32 | 缺陷作业 | 2019-04-26 → 2019-05-06 (+10d) | 2019-04-26 → 2019-05-06 (+10d) |  | 11d → 3d |  |
| 33 | 缺陷统计 | 2019-04-29 → 2019-05-07 (+8d) | 2019-04-29 → 2019-05-08 (+9d) | 1d? → 2d | 11d → 1d |  |
| 34 | 专项作业 | 2019-04-30 → 2019-05-09 (+9d) | 2019-04-30 → 2019-05-10 (+10d) | 1d? → 2d | 11d → 1d |  |
| 35 | **设备管理-后台** | 2019-05-06 → 2019-05-13 (+7d) | 2019-05-14 → 2019-05-21 (+7d) |  | 6d → 1d |  |
| 36 | **设备总览** | 2019-05-06 → 2019-05-13 (+7d) | 2019-05-13 → 2019-05-20 (+7d) |  | 7d → 2d |  |
| 37 | 设备规模 | 2019-05-06 → 2019-05-13 (+7d) | 2019-05-06 → 2019-05-13 (+7d) |  | 12d → 2d |  |
| 38 | 年限分析 | 2019-05-07 → 2019-05-14 (+7d) | 2019-05-07 → 2019-05-14 (+7d) |  | 7d → 2d |  |
| 39 | 增长趋势 | 2019-05-08 → 2019-05-15 (+7d) | 2019-05-09 → 2019-05-16 (+7d) |  | 7d → 2d |  |
| 40 | 区域分析 | 2019-05-10 → 2019-05-17 (+7d) | 2019-05-13 → 2019-05-20 (+7d) |  | 7d → 2d |  |
| 41 | **缺陷总览** | 2019-05-06 → 2019-05-13 (+7d) | 2019-05-09 → 2019-05-21 (+12d) | 4d? → 7d? | 9d → 1d |  |
| 42 | 缺陷统计 | 2019-05-06 → 2019-05-13 (+7d) | 2019-05-06 → 2019-05-13 (+7d) |  | 12d → 1d |  |
| 43 | 增长趋势 | 2019-05-07 → 2019-05-14 (+7d) | 2019-05-07 → 2019-05-15 (+8d) | 1d? → 2d | 9d → 1d |  |
| 44 | 专业分析 | 2019-05-08 → 2019-05-16 (+8d) | 2019-05-08 → 2019-05-17 (+9d) | 1d? → 2d | 9d → 1d |  |
| 45 | 设备类型分析 | 2019-05-09 → 2019-05-20 (+11d) | 2019-05-09 → 2019-05-21 (+12d) | 1d? → 2d | 9d → 1d |  |
| 46 | **设备周期管理** | 2019-05-06 → 2019-05-13 (+7d) | 2019-05-14 → 2019-05-21 (+7d) |  | 6d → 1d |  |
| 47 | 各地市周期分析 | 2019-05-06 → 2019-05-13 (+7d) | 2019-05-06 → 2019-05-13 (+7d) |  | 12d → 1d |  |
| 48 | 已超周期分析 | 2019-05-07 → 2019-05-14 (+7d) | 2019-05-08 → 2019-05-15 (+7d) |  | 6d → 1d |  |
| 49 | 3个月内即将找周期分析 | 2019-05-09 → 2019-05-16 (+7d) | 2019-05-10 → 2019-05-17 (+7d) |  | 6d → 1d |  |
| 50 | 已超周期未安排计划分析 | 2019-05-13 → 2019-05-20 (+7d) | 2019-05-14 → 2019-05-21 (+7d) |  | 6d → 1d |  |

## Version 3 (saved 2019-04-04)

Note of the change: 刚刚更新

Last finish 2019-05-22 → 2019-05-24 (+2d).

Added:

| ID | Task | Duration | Start | Finish | Predecessors |
| --- | --- | --- | --- | --- | --- |
| 58 | 项目重构路由配置+ 路由权限认证 | 4d | 2019-04-08 | 2019-04-11 |  |
| 59 | 实现面包屑导航 | 2d | 2019-04-12 | 2019-04-15 | 58 |
| 60 | 项目模块部分tab页重构为对应路由的单独页 | 1d? | 2019-04-16 | 2019-04-16 | 59 |
| 61 | 根据实际业务需求完成对应后台模板管理页面的构建 | 10d | 2019-04-17 | 2019-04-30 | 60 |

Changed:

| ID | Task | Start | Finish | Duration | Total float | Predecessors |
| --- | --- | --- | --- | --- | --- | --- |
| 1 | **运维管理主站&&终端 第2阶段** |  | 2019-05-22 → 2019-05-24 (+2d) | 30d? → 32d? |  |  |
| 57 | **后台管理--模板** |  | 2019-04-15 → 2019-05-24 (+39d) | 6d? → 32d? | 24d → 0d |  |
| 62 | 设计部测试并集中反馈测试结果 | 2019-04-08 → 2019-05-06 (+28d) | 2019-04-08 → 2019-05-06 (+28d) |  | 24d → 0d | none → 61 |
| 63 | 完善、修复不符合测试大纲要求 | 2019-04-09 → 2019-05-07 (+28d) | 2019-04-10 → 2019-05-08 (+28d) |  | 24d → 0d |  |
| 64 | 设计部确认效果并意见达成一致 | 2019-04-11 → 2019-05-09 (+28d) | 2019-04-15 → 2019-05-13 (+28d) |  | 24d → 0d |  |
| 65 | 中试部测试 | 2019-04-08 → 2019-05-14 (+36d) | 2019-04-12 → 2019-05-20 (+38d) |  | 25d → 0d | none → 64 |
| 66 | bug修复 | 2019-04-08 → 2019-05-21 (+43d) | 2019-04-11 → 2019-05-24 (+43d) |  | 26d → 0d | none → 65 |
